# Salesforce Service Cloud 150-Seat Contact Centre Transition

How a schedule from MS Project XML changed from version to version. A marks actual dates.

## Version 1 (saved 2026-11-14)

Note of the change: Add importable Microsoft Project XML schedule

| ID | Task | Duration | Start | Finish | Predecessors |
| --- | --- | --- | --- | --- | --- |
| 1 | Mobilization and transition authorization | 2d | 2026-11-30 | 2026-12-01 |  |
| 2 | SOW review and contractual requirements | 3d | 2026-11-30 | 2026-12-02 | 1 |
| 3 | Confirm objectives, scope and success measures | 3d | 2026-12-01 | 2026-12-03 | 1 |
| 4 | Approve project charter and governance | 2d | 2026-12-03 | 2026-12-04 | 2, 3 |
| 5 | Stakeholder register, RACI and communication plan | 3d | 2026-12-01 | 2026-12-03 | 1 |
| 6 | Kickoff and integrated baseline approval | 1d | 2026-12-07 | 2026-12-07 | 4, 5 |
| 7 | Current-state discovery workshops | 5d | 2026-12-07 | 2026-12-11 | 6 |
| 8 | Requirements and acceptance criteria | 4d | 2026-12-11 | 2026-12-16 | 7 |
| 9 | Feasibility, volumes, service windows and staffing assessment | 4d | 2026-12-10 | 2026-12-15 | 7 |
| 10 | To-Be workflows, case taxonomy and service model | 4d | 2026-12-17 | 2026-12-22 | 8, 9 |
| 11 | Solution architecture and CTI integration design | 4d | 2026-12-17 | 2026-12-22 | 8 |
| 12 | Security, network, identity and infrastructure readiness | 4d | 2026-12-07 | 2026-12-10 | 6 |
| 13 | Confirm Salesforce org, environments and licence requirements | 2d | 2026-12-23 | 2026-12-24 | 11 |
| 14 | Provision 150 licences and user access | 3d | 2026-12-25 | 2026-12-29 | 13 |
| 15 | Configure CRM objects, fields, layouts and record types | 6d | 2026-12-23 | 2026-12-30 | 11, 13 |
| 16 | Configure roles, profiles, permissions and sharing | 4d | 2026-12-23 | 2026-12-28 | 11, 13 |
| 17 | Configure cases, queues, assignment and escalation rules | 5d | 2026-12-31 | 2027-01-06 | 10, 15, 16 |
| 18 | Configure reports, dashboards and SLA visibility | 4d | 2027-01-07 | 2027-01-12 | 17 |
| 19 | Design Avaya CTI connector and softphone integration | 4d | 2026-12-23 | 2026-12-28 | 11, 12, 13 |
| 20 | Build CTI, screen-pop and call logging | 6d | 2026-12-30 | 2027-01-06 | 19, 15 |
| 21 | Network, firewall and telephony connectivity tests | 3d | 2027-01-07 | 2027-01-11 | 12, 20 |
| 22 | Inventory legacy data and profile data quality | 4d | 2026-12-14 | 2026-12-17 | 8 |
| 23 | Approve source-to-target mapping and cleansing rules | 3d | 2026-12-18 | 2026-12-22 | 22, 15 |
| 24 | Cleanse and deduplicate legacy customer and case data | 5d | 2026-12-23 | 2026-12-29 | 23 |
| 25 | Test migration and reconcile records | 3d | 2026-12-30 | 2027-01-01 | 24, 15 |
| 26 | Resolve migration exceptions and obtain approval | 2d | 2027-01-04 | 2027-01-05 | 25 |
| 27 | SIT strategy, test cases and traceability matrix | 3d | 2027-01-05 | 2027-01-07 | 10, 17, 20 |
| 28 | Execute CRM and CTI system integration testing | 3d | 2027-01-08 | 2027-01-12 | 18, 21, 26, 27 |
| 29 | Resolve critical defects and regression test | 3d | 2027-01-13 | 2027-01-15 | 28 |
| 30 | Prepare UAT scripts and entry/exit criteria | 3d | 2027-01-08 | 2027-01-12 | 27 |
| 31 | Execute business UAT | 4d | 2027-01-18 | 2027-01-21 | 29, 30 |
| 32 | Close UAT defects and secure acceptance | 1d | 2027-01-22 | 2027-01-22 | 31 |
| 33 | Develop SOPs, knowledge base and training materials | 6d | 2027-01-04 | 2027-01-11 | 10, 17, 20 |
| 34 | Develop 150-seat hiring and workforce plan | 4d | 2026-12-16 | 2026-12-21 | 6, 9 |
| 35 | Build WFM roster and training backfill plan | 3d | 2026-12-22 | 2026-12-24 | 34 |
| 36 | Train-the-Trainer and super-user certification | 2d | 2027-01-25 | 2027-01-26 | 32, 33, 35 |
| 37 | Train agents in cohorts and assess competency | 4d | 2027-01-27 | 2027-02-01 | 36 |
| 38 | Validate access and agent readiness | 2d | 2027-02-02 | 2027-02-03 | 14, 37 |
| 39 | Cutover rehearsal, communications and rollback plan | 4d | 2027-01-28 | 2027-02-02 | 32 |
| 40 | Operational readiness assessment and go/no-go pack | 1d | 2027-02-03 | 2027-02-03 | 39, 38 |
| 41 | Pilot 30 agents with floor-walker support | 5d | 2027-02-04 | 2027-02-10 | 40 |
| 42 | Evaluate pilot KPIs, defects and adoption | 2d | 2027-02-11 | 2027-02-12 | 41 |
| 43 | Steering go/no-go decision | 1d | 2027-02-15 | 2027-02-15 | 42 |
| 44 | Wave 1 cutover: 60 agents | 1d | 2027-02-16 | 2027-02-16 | 43 |
| 45 | Wave 1 stabilization and issue resolution | 2d | 2027-02-17 | 2027-02-18 | 44 |
| 46 | Wave 2 cutover: remaining 60 agents | 1d | 2027-02-19 | 2027-02-19 | 45 |
| 47 | Confirm all 150 agents active and queues stable | 1d | 2027-02-22 | 2027-02-22 | 46 |
| 48 | Hypercare and daily incident triage | 3d | 2027-02-23 | 2027-02-25 | 47 |
| 49 | Monitor SLA, AHT, FCR, CSAT, abandon rate and uptime | 3d | 2027-02-23 | 2027-02-25 | 47 |
| 50 | Knowledge transfer to BAU support and operations | 3d | 2027-02-23 | 2027-02-25 | 47 |
| 51 | BAU acceptance, closure and lessons learned | 1d | 2027-02-26 | 2027-02-26 | 48, 49, 50 |

## Version 2 (saved 2026-11-14)

Note of the change: Align MS Project schedule dates and FS/SS dependencies with Excel baseline

Last finish stays 2027-02-26.

Changed:

| ID | Task | Start | Finish | Duration | Predecessors |
| --- | --- | --- | --- | --- | --- |
| 2 | SOW review and contractual requirements |  |  |  | 1 → 1SS |
| 3 | Confirm objectives, scope and success measures |  |  |  | 1 → 1SS |
| 4 | Approve project charter and governance |  |  |  | 2, 3 → 2, 3SS |
| 5 | Stakeholder register, RACI and communication plan |  |  |  | 1 → 1SS |
| 7 | Current-state discovery workshops |  |  |  | 6 → 6SS |
| 8 | Requirements and acceptance criteria |  |  |  | 7 → 7SS |
| 9 | Feasibility, volumes, service windows and staffing assessment |  |  |  | 7 → 7SS |
| 12 | Security, network, identity and infrastructure readiness |  |  |  | 6 → 6SS |
| 15 | Configure CRM objects, fields, layouts and record types |  |  |  | 11, 13 → 11, 13SS |
| 16 | Configure roles, profiles, permissions and sharing |  |  |  | 11, 13 → 11, 13SS |
| 19 | Design Avaya CTI connector and softphone integration |  |  |  | 11, 12, 13 → 11, 12, 13SS |
| 20 | Build CTI, screen-pop and call logging |  |  |  | 19, 15 → 19, 15SS |
| 22 | Inventory legacy data and profile data quality |  |  |  | 8 → 8SS |
| 23 | Approve source-to-target mapping and cleansing rules |  |  |  | 22, 15 → 22 |
| 25 | Test migration and reconcile records | 2026-12-30 → 2027-01-01 (+2d) | 2027-01-01 → 2027-01-05 (+4d) |  |  |
| 26 | Resolve migration exceptions and obtain approval | 2027-01-04 → 2027-01-06 (+2d) | 2027-01-05 → 2027-01-07 (+2d) |  |  |
| 27 | SIT strategy, test cases and traceability matrix |  |  |  | 10, 17, 20 → 10, 17SS, 20SS |
| 28 | Execute CRM and CTI system integration testing |  |  |  | 18, 21, 26, 27 → 18SS, 21SS, 26, 27 |
| 33 | Develop SOPs, knowledge base and training materials |  |  |  | 10, 17, 20 → 10, 17SS, 20SS |
| 38 | Validate access and agent readiness |  | 2027-02-03 → 2027-02-02 (-1d) | 2d → 1d |  |
